# Contabilidad

How a schedule from Planner changed from version to version. A marks actual dates.

## Version 1 (saved 2011-12-05)

Note of the change: First Import

| ID | WBS | Task | Start | Finish | Predecessors | Complete |
| --- | --- | --- | --- | --- | --- | --- |
| 1 |  | ICE-NET 7 (Crear Versión Simple de los Componentes de Delphi) | 2008-04-22 | 2008-04-22 |  | 100% |
| 2 |  | Login.pas | 2008-04-22 | 2008-04-22 |  | 100% |
| 3 |  | Splash.pas | 2008-04-22 | 2008-04-22 |  | 100% |
| 4 | 4 | **MANTENIMIENTOS SENCILLOS** | 2008-04-22 | 2008-04-28 |  |  |
| 5 |  | Quitar Menús Especiales y sus Componentes | 2008-04-22 | 2008-04-22 |  | 100% |
| 6 |  | Provincias.pas | 2008-04-22 | 2008-04-25 | 5 | 100% |
| 7 |  | Paises.pas | 2008-04-25 | 2008-04-26 | 6 |  |
| 8 |  | TiposDiario.pas | 2008-04-26 | 2008-04-26 | 7 |  |
| 9 |  | Comerciales.pas | 2008-04-26 | 2008-04-27 | 8 |  |
| 10 |  | Delegaciones.pas | 2008-04-27 | 2008-04-27 | 9 |  |
| 11 |  | Departamentos.pas | 2008-04-27 | 2008-04-28 | 10 |  |
| 12 |  | Secciones.pas | 2008-04-28 | 2008-04-28 | 11 |  |
| 13 |  | Proyectos.pas | 2008-04-28 | 2008-04-28 | 12 |  |
| 14 | 5 | **MANTENIMIENTOS COMPLEJOS** | 2008-04-22 | 2008-04-28 |  |  |
| 15 |  | FormasPago.pas | 2008-04-22 | 2008-04-22 |  |  |
| 16 |  | Usuarios.pas | 2008-04-22 | 2008-04-24 | 15 |  |
| 17 |  | Conceptos.pas | 2008-04-24 | 2008-04-25 | 16 |  |
| 18 |  | Titulos.pas | 2008-04-25 | 2008-04-25 | 17 |  |
| 19 |  | Grupos.pas | 2008-04-25 | 2008-04-26 | 18 |  |
| 20 |  | Cuentas.pas | 2008-04-26 | 2008-04-27 | 19 |  |
| 21 |  | SubCuentas.pas | 2008-04-27 | 2008-04-27 | 20 |  |
| 22 |  | Analiticas.pas | 2008-04-27 | 2008-04-28 | 21 |  |
| 23 | 6 | **LANZADORES DE INFORMES** | 2008-04-22 | 2008-05-06 |  |  |
| 24 |  | PlanContable.pas | 2008-04-22 | 2008-04-22 |  |  |
| 25 |  | PlanAnalitico.pas | 2008-04-22 | 2008-04-24 | 24 |  |
| 26 |  | FiltroListadoAsientos.pas | 2008-04-24 | 2008-04-25 | 25 |  |
| 27 |  | FiltroListadosMayor.pas | 2008-04-25 | 2008-04-26 | 26 |  |
| 28 |  | FiltroBalances.pas | 2008-04-26 | 2008-04-27 | 27 |  |
| 29 |  | FiltroSitPgCg.pas | 2008-04-27 | 2008-04-28 | 28 |  |
| 30 |  | BalAcumulados.pas | 2008-04-28 | 2008-04-29 | 29 |  |
| 31 |  | BalExplotacion.pas | 2008-04-29 | 2008-04-30 | 30 |  |
| 32 | 6.9 | **Filtro Libro Facturas Emitidas** | 2008-04-30 | 2008-05-01 | 31 |  |
| 33 |  | FiltroLibroFacturasEmitidad.pas | 2008-04-30 | 2008-05-01 |  |  |
| 34 |  | IVA300.pas | 2008-04-30 | 2008-05-01 | 33SS |  |
| 35 |  | Filtro347.pas | 2008-05-01 | 2008-05-02 | 32 |  |
| 36 |  | IRPF110.pas | 2008-05-02 | 2008-05-03 | 35 |  |
| 37 |  | IRPF115.pas | 2008-05-03 | 2008-05-04 | 36 |  |
| 38 |  | ISoc202.pas | 2008-05-04 | 2008-05-05 | 37 |  |
| 39 |  | Amortizaciones.pas | 2008-05-05 | 2008-05-06 | 38 |  |
| 40 | 7 | **LANZADOR DE UTILIDADES** | 2008-04-22 | 2008-04-29 |  |  |
| 41 |  | RecalculoSaldos.pas | 2008-04-22 | 2008-04-22 |  |  |
| 42 |  | BorradoDiario.pas | 2008-04-22 | 2008-04-24 | 41 |  |
| 43 |  | TraspasoApuntes.pas | 2008-04-24 | 2008-04-25 | 42 |  |
| 44 |  | CopiaAsientos.pas | 2008-04-25 | 2008-04-26 | 43 |  |
| 45 |  | PunteoDiario.pas | 2008-04-26 | 2008-04-27 | 44 |  |
| 46 |  | CierreEjercicio.pas | 2008-04-27 | 2008-04-28 | 45 |  |
| 47 |  | EnlaceContable.pas | 2008-04-28 | 2008-04-29 | 46 |  |
| 48 | 8 | **DATAMODULOS** | 2008-04-22 | 2008-04-25 |  |  |
| 49 |  | DM.pas | 2008-04-22 | 2008-04-22 |  |  |
| 50 |  | DMControl.pas | 2008-04-22 | 2008-04-24 | 49 |  |
| 51 |  | DMConta.pas | 2008-04-24 | 2008-04-25 | 50 |  |
| 52 | 9 | **MODULOS PRINCIPALES** | 2008-04-22 | 2008-04-25 |  |  |
| 53 |  | Diario.pas (Carga Asientos) | 2008-04-22 | 2008-04-22 |  |  |
| 54 | 9.2 | **Cartera de Efectos** | 2008-04-22 | 2008-04-24 | 53 |  |
| 55 |  | CarteraEfectos.pas | 2008-04-22 | 2008-04-24 |  |  |
| 56 |  | EfectosComerciales.pas | 2008-04-22 | 2008-04-24 | 55SS |  |
| 57 |  | SituacionEfecto.pas | 2008-04-22 | 2008-04-24 | 55SS |  |
| 58 |  | GeneracionAsiento.pas | 2008-04-22 | 2008-04-24 | 55SS |  |
| 59 | 9.3 | **Empresas** | 2008-04-24 | 2008-04-25 | 54 |  |
| 60 |  | Empresas.pas | 2008-04-24 | 2008-04-25 |  |  |
| 61 |  | UtilEmpresas.pas | 2008-04-24 | 2008-04-25 | 60SS |  |
| 62 | 10 | **CARGAS RÁPIDAS DE APUNTES** | 2008-04-22 | 2008-04-26 |  |  |
| 63 | 10.1 | **Carga Rápida Facturas** | 2008-04-22 | 2008-04-22 |  |  |
| 64 |  | CargaRapidaFacturas.pas | 2008-04-22 | 2008-04-22 |  |  |
| 65 |  | Vencimientos.pas | 2008-04-22 | 2008-04-22 | 64SS |  |
| 66 |  | CargaApuntes.pas | 2008-04-24 | 2008-04-24 | 63 |  |
| 67 |  | CargaRapidaNominas.pas | 2008-04-24 | 2008-04-25 | 66 |  |
| 68 |  | CargaCobrosPagos.pas | 2008-04-25 | 2008-04-26 | 67 |  |
| 69 | 11 | **UTILIDADES DEL SISTEMA** | 2008-04-22 | 2008-04-29 |  |  |
| 70 |  | ActualizacionDB.pas | 2008-04-22 | 2008-04-22 |  |  |

| ID | WBS | Task | Start | Finish | Predecessors | Complete |
| --- | --- | --- | --- | --- | --- | --- |
| 71 |  | Importacion.pas | 2008-04-22 | 2008-04-24 | 70 |  |
| 72 |  | TraspasoDatos.pas | 2008-04-24 | 2008-04-25 | 71 |  |
| 73 |  | Parametrizacion.pas | 2008-04-25 | 2008-04-26 | 72 |  |
| 74 |  | ParametrizacionFacturacion.pas | 2008-04-26 | 2008-04-27 | 73 |  |
| 75 |  | Calculadora.pas | 2008-04-27 | 2008-04-28 | 74 |  |
| 76 |  | PreviewForm.pas (Formulario Especial Informes) | 2008-04-28 | 2008-04-29 | 75 |  |
| 77 | 12 | **UTILIDADES VARIAS** | 2008-04-22 | 2008-04-25 |  |  |
| 78 |  | FiltroMayorSubcuenta.pas | 2008-04-22 | 2008-04-22 |  |  |
| 79 |  | NuevaSubcuenta.pas | 2008-04-22 | 2008-04-24 | 78 |  |
| 80 | 12.3 | **Carga Asiento** | 2008-04-24 | 2008-04-25 | 79 |  |
| 81 |  | CargaAsiento.pas | 2008-04-24 | 2008-04-25 |  |  |
| 82 |  | DetalleIVA.pas | 2008-04-24 | 2008-04-25 | 81SS |  |
| 83 | 13 | **UNITS SIN FORM** | 2008-04-22 | 2008-04-30 |  |  |
| 84 |  | Globales.pas | 2008-04-22 | 2008-04-22 |  |  |
| 85 |  | General.pas | 2008-04-22 | 2008-04-24 | 84 |  |
| 86 |  | InfAsientos.pas | 2008-04-24 | 2008-04-25 | 85 |  |
| 87 |  | InfMayor.pas | 2008-04-25 | 2008-04-26 | 86 |  |
| 88 |  | InfLibroIVA.pas | 2008-04-26 | 2008-04-27 | 87 |  |
| 89 |  | InfMod347.pas | 2008-04-27 | 2008-04-28 | 88 |  |
| 90 |  | InfBalanceSumasSaldos.pas | 2008-04-28 | 2008-04-29 | 89 |  |
| 91 |  | InfBalanceSituacion.pas | 2008-04-29 | 2008-04-30 | 90 |  |
| 92 | 14 | **ELIMINACIÓN DE COMPONENTES DE TERCEROS** | 2008-04-22 | 2008-04-22 |  |  |
| 93 |  | Erradicar el BDE | 2008-04-22 | 2008-04-22 |  |  |
| 94 |  | First Class 4000 Std Vcl 7 Erradicar estos componentes. | 2008-04-22 | 2008-04-22 |  |  |
| 95 |  | Quitar el Componente UEspere. | 2008-04-22 | 2008-04-22 |  |  |
| 96 |  | InfoPower 4000 Std_VCL 7 Erradicar estos Componentes. | 2008-04-22 | 2008-04-22 |  |  |
| 97 |  | Orpheus400 Erradicar estos componentes | 2008-04-22 | 2008-04-22 |  |  |
| 98 |  | SysTools7 erradicar estos Componentes | 2008-04-22 | 2008-04-22 |  |  |
| 99 |  | am2000_d7 (Animated Menus) | 2008-04-22 | 2008-04-22 |  | 100% |
| 100 |  | OnGuard Erradicar estos componentes. | 2008-04-22 | 2008-04-22 |  |  |
| 101 |  | OPartner7 Erradicar estos componentes. | 2008-04-22 | 2008-04-22 |  |  |
| 102 |  | Siam.dpk. Erradicar estos componentes. | 2008-04-22 | 2008-04-22 |  |  |
| 103 |  | BaseDatos.dpk Erradicar estos componentes | 2008-04-22 | 2008-04-22 |  |  |
| 104 | 15 | **NUEVO FORMATO DE LOS INFORMES** | 2008-04-22 | 2008-06-12 |  |  |
| 105 |  | CarteraBanco.rtm | 2008-04-22 | 2008-04-22 |  |  |
| 106 |  | Cartera Comercial.rtm | 2008-04-22 | 2008-04-24 | 105 |  |
| 107 |  | CarteraFVenc.rtm | 2008-04-24 | 2008-04-25 | 106 |  |
| 108 |  | CarteraSituacion.rtm | 2008-04-25 | 2008-04-26 | 107 |  |
| 109 |  | CarteraSubCta.rtm | 2008-04-26 | 2008-04-27 | 108 |  |
| 110 |  | LAmortizacion.rtm | 2008-04-27 | 2008-04-28 | 109 |  |
| 111 |  | LAnalíticas.rtm | 2008-04-28 | 2008-04-29 | 110 |  |
| 112 |  | LAsientos.rtm | 2008-04-29 | 2008-04-30 | 111 |  |
| 113 |  | LAsientosExpandido.rtm | 2008-04-30 | 2008-05-01 | 112 |  |
| 114 |  | LBalanceAcumulados.rtm | 2008-05-01 | 2008-05-02 | 113 |  |
| 115 |  | LBalanceExplotacion.rtm | 2008-05-02 | 2008-05-03 | 114 |  |
| 116 |  | LBlanceExplotacion_Analitica.rtm | 2008-05-03 | 2008-05-04 | 115 |  |
| 117 |  | LBalanceSituacion.rtm | 2008-05-04 | 2008-05-05 | 116 |  |
| 118 |  | LBalanceSituacionAnterior.rtm | 2008-05-05 | 2008-05-06 | 117 |  |
| 119 |  | LComerciales.rtm | 2008-05-06 | 2008-05-07 | 118 |  |
| 120 |  | LConceptos.rtm | 2008-05-07 | 2008-05-08 | 119 |  |
| 121 |  | LCuentaPPGG.rtm | 2008-05-08 | 2008-05-08 | 120 |  |
| 122 |  | LCuentaPPGGAnterior.rtm | 2008-05-09 | 2008-05-09 | 121 |  |
| 123 |  | LCuentas.rtm | 2008-05-09 | 2008-05-10 | 122 |  |
| 124 |  | LDelegaciones.rtm | 2008-05-10 | 2008-05-11 | 123 |  |
| 125 |  | LDepartamentos.rtm | 2008-05-11 | 2008-05-12 | 124 |  |
| 126 |  | LDetalleInmobilizado.rtm | 2008-05-12 | 2008-05-13 | 125 |  |
| 127 |  | LDetalleSubcuentas.rtm | 2008-05-13 | 2008-05-14 | 126 |  |
| 128 |  | LEmpresas.rtm | 2008-05-14 | 2008-05-15 | 127 |  |
| 129 |  | LFormasPago.rtm | 2008-05-15 | 2008-05-16 | 128 |  |
| 130 |  | LGastos.rtm | 2008-05-16 | 2008-05-17 | 129 |  |
| 131 |  | LGastosConcepto.rtm | 2008-05-17 | 2008-05-18 | 130 |  |
| 132 |  | LGastosExpandido.rtm | 2008-05-18 | 2008-05-19 | 131 |  |
| 133 |  | LGastosSubcuenta.rtm | 2008-05-19 | 2008-05-20 | 132 |  |
| 134 |  | LGrupos.rtm | 2008-05-20 | 2008-05-21 | 133 |  |
| 135 |  | LIncidenciasTraspaso.rtm | 2008-05-21 | 2008-05-22 | 134 |  |
| 136 |  | LIngresoGastos.rtm | 2008-05-22 | 2008-05-23 | 135 |  |
| 137 |  | LLibroFacturasEmitidas2.rtm | 2008-05-23 | 2008-05-24 | 136 |  |
| 138 |  | LLbroFacturasEmitidas.rtm | 2008-05-24 | 2008-05-24 | 137 |  |
| 139 |  | LLibroFacturasEmitidasSubcta.rtm | 2008-05-25 | 2008-05-25 | 138 |  |
| 140 |  | LLibroFacturasRecibidas.rtm | 2008-05-25 | 2008-05-26 | 139 |  |

| ID | Task | Start | Finish | Predecessors |
| --- | --- | --- | --- | --- |
| 141 | LLibroFacturasRecibidasSubcta.rtm | 2008-05-26 | 2008-05-27 | 140 |
| 142 | LLibroFacturasTipoIVA.rtm | 2008-05-27 | 2008-05-28 | 141 |
| 143 | LMayor3.rtm | 2008-05-28 | 2008-05-29 | 142 |
| 144 | LMayor.rtm | 2008-05-29 | 2008-05-30 | 143 |
| 145 | LModelo300.rtm | 2008-05-30 | 2008-05-31 | 144 |
| 146 | LOperaTer347.rtm | 2008-05-31 | 2008-06-01 | 145 |
| 147 | LOperaTer349.rtm | 2008-06-01 | 2008-06-02 | 146 |
| 148 | LPaises.rtm | 2008-06-02 | 2008-06-03 | 147 |
| 149 | LPlanAnalitico.rtm | 2008-06-03 | 2008-06-04 | 148 |
| 150 | LPlanContable.rtm | 2008-06-04 | 2008-06-05 | 149 |
| 151 | LProvincias.rtm | 2008-06-05 | 2008-06-06 | 150 |
| 152 | LProyectos.rtm | 2008-06-06 | 2008-06-07 | 151 |
| 153 | LSecciones.rtm | 2008-06-07 | 2008-06-08 | 152 |
| 154 | LSubCuentas.rtm | 2008-06-08 | 2008-06-09 | 153 |
| 155 | LSumasSaldos.rtm | 2008-06-09 | 2008-06-09 | 154 |
| 156 | LSumasSaldosSaldo.rtm | 2008-06-10 | 2008-06-10 | 155 |
| 157 | LtiposDiario.rtm | 2008-06-10 | 2008-06-11 | 156 |
| 158 | LTitulos.rtm | 2008-06-11 | 2008-06-12 | 157 |

## Version 2 (saved 2011-12-05)

Note of the change: New style for catalog "Proyectos". Without strange components. Changed the year in the caption of the "Login" form.

Last finish stays 2008-06-12. Complete tasks 6 → 7.

Changed:

| ID | Task | Complete | Other |
| --- | --- | --- | --- |
| 7 | Paises.pas | 0% → 100% | resources none → Juan C.Cilleruelo |
